# Proj_WBS_post_baseline_backup_statusreport1

Schedule from MS Project, 2023-09-25 to 2027-12-31, status date 2024-02-07, costs in €, A marks actual dates.

## Calendars

- Standard: Mon-Sun 09:00-13:00, 14:00-18:00. Exceptions (off unless hours are given): 2023-11-11 09:00-13:00, 14:00-18:00.
- 24 ore: Mon-Sun 00:00-24:00.

## Resources

| Resource | Unit | Rate |
| --- | --- | --- |
| Diana Lavinia Cojoc |  | 18 |
| Ernesto De Iesu |  | 18 |
| Gabriele Di Stefano |  | 18 |
| Roberta Galluzzo |  | 18 |
| Michela Percaccio |  | 18 |
| Emanuele Setaro |  | 18 |
| Gerardo Festa |  | 24 |
| Davide La Gamba |  | 24 |
| Campagna marketing 0 | Advertisement anno 1 | 9000 |
| Reparto Marketing |  | 100 |
| Campagna marketing II | Advertisement anno 2 | 12000 |
| Campagna marketing III | Advertisement anno 3 | 14000 |
| PM1 |  | 24 |
| PM2 |  | 24 |
| Backend Dev 1 |  | 18 |
| Backend Dev 2 |  | 18 |
| Frontend Dev 1 |  | 16 |
| Frontend Dev 2 |  | 16 |
| Quality Assurance Analyst |  | 16 |
| Data Scientist |  | 19 |
| Hosting - Anno 0 |  | 710 |
| Hosting - Anno 1 |  | 1170 |
| Hosting - Anno 2 |  | 2130 |
| Hosting - Anno 3 |  | 3500 |
| Campagna marketing I | Adv anno 1 | 11000 |
| Reparto Training |  | 12 |
| Reparto Customer Care |  | 12 |
| Sviluppo Backend |  |  |

## Schedule

| ID | WBS | Task | Duration | Start | Finish | Predecessors | Complete | Remaining | Baseline start | Baseline finish | Baseline duration | Total slack | Constraint | Deadline | Resources | Work | Actual work | Cost | Baseline cost | Actual cost | Text12 | Text17 | Text18 | Text19 | Text1 | Accountability |
| --- | --- | --- | --- | --- | --- | --- | --- | --- | --- | --- | --- | --- | --- | --- | --- | --- | --- | --- | --- | --- | --- | --- | --- | --- | --- | --- |
| 1 | 1 | **GreenTrails** | 1559d? | 2023-09-25 A | 2027-12-31 |  | 14% | 1334.1d? | 2023-09-25 | 2027-12-31 | 1559d? | 0d |  |  |  | 9247.75h | 506.75h | 212,549.67 | 212,695.16 | 9,880.51 | 385,25 h | 385,5 h | 385,5 h | sab 03/02/24 |  |  |
| 2 | 1.1 | **Demo** | 136d? | 2023-09-25 A | 2024-02-07 |  | 99% | 0d? | 2023-09-25 | 2024-02-06 | 135d? | 0d |  |  |  | 506.75h | 506.75h | 9,880.51 | 10,026 | 9,880.51 |  |  |  |  |  |  |
| 3 | 1.1.1 | **RAD** | 47d? | 2023-10-16 A | 2023-12-01 A |  | 100% |  | 2023-10-16 | 2023-12-02 | 48d? |  |  |  |  | 62.25h | 62.25h | 1,120.51 | 1,107 | 1,120.51 | 59,25 h | 58,5 h | 58,5 h | sab 02/12/23 |  |  |
| 4 | 1.1.1.1 | **Requirements Specification** | 19d? | 2023-11-07 A | 2023-11-25 A |  | 100% |  | 2023-11-07 | 2023-11-25 | 19d? |  |  |  |  | 38.25h | 38.25h | 688.51 | 675 | 688.51 | 38,25 h | 37,5 h | 37,5 h | sab 25/11/23 |  |  |
| 5 | 1.1.1.1.1 | Introduzione RAD | 5d | 2023-11-07 A | 2023-11-11 A |  | 100% |  | 2023-11-07 | 2023-11-11 | 5d |  | finish no earlier than 2023-11-11 |  | Diana Lavinia Cojoc [2.5%] | 1h | 1h | 18 | 18 | 18 | 1 h | 1 h | 1 h | sab 11/11/23 | RAD_0.1 | DLC |
| 6 | 1.1.1.1.2 | **Sistema Corrente** | 5d | 2023-11-07 A | 2023-11-11 A |  | 100% |  | 2023-11-07 | 2023-11-11 | 5d |  |  |  |  | 4h | 4h | 72 | 54 | 72 | 4 h | 3 h | 3 h | sab 11/11/23 |  |  |
| 7 | 1.1.1.1.2.1 | Panoramica sistema corrente | 5d | 2023-11-07 A | 2023-11-11 A |  | 100% |  | 2023-11-07 | 2023-11-11 | 5d |  | start no earlier than 2023-11-07 |  | Roberta Galluzzo [2.5%] | 1h | 1h | 18 | 18 | 18 | 1 h | 1 h | 1 h | sab 11/11/23 | RAD_0.2 | RG |
| 8 | 1.1.1.1.2.2 | Activity Diagram sistema corrente | 5d | 2023-11-07 A | 2023-11-11 A |  | 100% |  | 2023-11-07 | 2023-11-11 | 5d |  | finish no earlier than 2023-11-11 | 2023-11-11 | Emanuele Setaro; Ernesto De Iesu | 3h | 3h | 54 | 36 | 54 | 3 h | 2 h | 2 h | sab 11/11/23 | RAD_0.3 | ES |
| 9 | 1.1.1.1.3 | **Sistema Proposto** | 19d? | 2023-11-07 A | 2023-11-25 A |  | 100% |  | 2023-11-07 | 2023-11-25 | 19d? |  |  |  |  | 33.25h | 33.25h | 598.51 | 603 | 598.51 | 33,25 h | 33,5 h | 33,5 h | sab 25/11/23 |  |  |
| 10 | 1.1.1.1.3.1 | Panoramica sistema proposto | 4d | 2023-11-07 A | 2023-11-10 A |  | 100% |  | 2023-11-07 | 2023-11-10 | 4d |  | finish no earlier than 2023-11-10 |  | Michela Percaccio [2.5%] | 0.5h | 0.5h | 9 | 9 | 9 | 0,5 h | 0,5 h | 0,5 h | ven 10/11/23 | RAD_0.4 | MP |
| 11 | 1.1.1.1.3.2 | Activity Diagram sistema proposto | 5d | 2023-11-07 A | 2023-11-11 A |  | 100% |  | 2023-11-07 | 2023-11-11 | 5d |  | start no earlier than 2023-11-07 |  | Gabriele Di Stefano [2.5%]; Michela Percaccio [2.5%] | 2h | 2h | 36 | 36 | 36 | 2 h | 2 h | 2 h | sab 11/11/23 | RAD_0.5 | GDS |
| 12 | 1.1.1.1.3.3 | Scenari | 3d | 2023-11-13 A | 2023-11-15 A | 11 | 100% |  | 2023-11-13 | 2023-11-15 | 3d |  | finish no earlier than 2023-11-15 |  | Diana Lavinia Cojoc [6.2%]; Emanuele Setaro [6.2%]; Ernesto De Iesu [6.2%]; Gabriele Di Stefano [6.2%]; Michela Percaccio [6.2%]; Roberta Galluzzo [6.2%] | 9h | 9h | 162 | 162 | 162 | 9 h | 9 h | 9 h | mer 15/11/23 | RAD_0.6 | EDI |
| 13 | 1.1.1.1.3.4 | Requisiti Funzionali | 10d | 2023-11-16 A | 2023-11-25 A | 12 | 100% |  | 2023-11-16 | 2023-11-20 | 5d |  | finish no earlier than 2023-11-25 |  | Diana Lavinia Cojoc [1.2%]; Emanuele Setaro [1.2%]; Ernesto De Iesu [1.2%]; Gabriele Di Stefano [1.2%]; Michela Percaccio [1.2%]; Roberta Galluzzo [1.2%] | 6h | 6h | 108 | 108 | 108 | 6 h | 6 h | 6 h | sab 25/11/23 | RAD_0.7 | DLC |
| 14 | 1.1.1.1.3.5 | Requisiti Non Funzionali | 10d | 2023-11-16 A | 2023-11-25 A | 12 | 100% |  | 2023-11-16 | 2023-11-20 | 5d |  | finish no earlier than 2023-11-25 |  | Diana Lavinia Cojoc [1.2%]; Emanuele Setaro [1.2%]; Ernesto De Iesu [1.2%]; Gabriele Di Stefano [1.2%]; Michela Percaccio [1.2%]; Roberta Galluzzo [1.2%] | 3h | 3h | 54 | 54 | 54 | 3 h | 3 h | 3 h | lun 20/11/23 | RAD_0.8 | RG |
| 15 | 1.1.1.1.3.6 | Use Cases | 5d | 2023-11-16 A | 2023-11-20 A | 12 | 100% |  | 2023-11-16 | 2023-11-20 | 5d |  |  |  | Emanuele Setaro [131.2%]; Ernesto De Iesu [131.2%]; Gabriele Di Stefano [131.2%]; Michela Percaccio [131.2%]; Roberta Galluzzo [131.2%]; Diana Lavinia Cojoc | 8.75h | 8.75h | 157.51 | 162 | 157.51 | 8,75 h | 9 h | 9 h | lun 20/11/23 | RAD_0.9 | ES |
| 16 | 1.1.1.1.3.7 | Use Case Diagram | 5d? | 2023-11-16 A | 2023-11-20 A | 12 | 100% |  | 2023-11-16 | 2023-11-20 | 5d? |  | finish no earlier than 2023-11-20 |  | Roberta Galluzzo [1.2%]; Ernesto De Iesu [1.2%] | 1h | 1h | 18 | 18 | 18 | 1 h | 1 h | 1 h | lun 20/11/23 | RAD_0.10 | EDI |
| 17 | 1.1.1.1.3.8 | Mock-up e Navigational Path | 3d | 2023-11-21 A | 2023-11-23 A | 15 | 100% |  | 2023-11-21 | 2023-11-23 | 3d |  | start no earlier than 2023-11-21 |  | Emanuele Setaro [4.2%]; Michela Percaccio; Roberta Galluzzo | 3h | 3h | 54 | 54 | 54 | 3 h | 3 h | 3 h | gio 23/11/23 | RAD_0.11 | MP |
| 18 | 1.1.1.2 | **Analysis Model** | 9d | 2023-11-21 A | 2023-11-29 A | 16 | 100% |  | 2023-11-21 | 2023-11-29 | 9d |  |  |  |  | 18h | 18h | 324 | 324 | 324 | 18 h | 18 h | 18 h | mer 29/11/23 |  |  |
| 19 | 1.1.1.2.1 | **Modello del Sistema** | 9d | 2023-11-21 A | 2023-11-29 A |  | 100% |  | 2023-11-21 | 2023-11-29 | 9d |  |  |  |  | 18h | 18h | 324 | 324 | 324 | 18 h | 18 h | 18 h | mer 29/11/23 |  |  |
| 20 | 1.1.1.2.1.1 | **Object Model** | 5d | 2023-11-21 A | 2023-11-25 A |  | 100% |  | 2023-11-21 | 2023-11-25 | 5d |  |  |  |  | 5h | 5h | 90 | 90 | 90 | 5 h | 5 h | 5 h | sab 25/11/23 |  |  |
| 21 | 1.1.1.2.1.1.1 | Definizione degli oggetti | 3d | 2023-11-21 A | 2023-11-23 A | 15 | 100% |  | 2023-11-21 | 2023-11-23 | 3d |  | start no earlier than 2023-11-21 |  | Diana Lavinia Cojoc [4.2%]; Ernesto De Iesu [4.2%]; Gabriele Di Stefano [4.2%] | 3h | 3h | 54 | 54 | 54 | 3 h | 3 h | 3 h | gio 23/11/23 | RAD_1.1 | GDS |
| 22 | 1.1.1.2.1.1.2 | Class Diagram RAD | 2d | 2023-11-24 A | 2023-11-25 A | 21 | 100% |  | 2023-11-24 | 2023-11-25 | 2d |  | start no earlier than 2023-11-24 |  | Michela Percaccio; Gabriele Di Stefano | 2h | 2h | 36 | 36 | 36 | 2 h | 2 h | 2 h | sab 25/11/23 | RAD_1.2 | MP |
| 23 | 1.1.1.2.1.2 | **Modelli Dinamici** | 6d | 2023-11-24 A | 2023-11-29 A |  | 100% |  | 2023-11-24 | 2023-11-29 | 6d |  |  |  |  | 13h | 13h | 234 | 234 | 234 | 13 h | 13 h | 13 h | mer 29/11/23 |  |  |
| 24 | 1.1.1.2.1.2.1 | Statechart Diagram | 4d | 2023-11-24 A | 2023-11-27 A | 21 | 100% |  | 2023-11-24 | 2023-11-26 | 3d |  | finish no earlier than 2023-11-27 |  | Ernesto De Iesu; Roberta Galluzzo; Diana Lavinia Cojoc; Emanuele Setaro | 4h | 4h | 72 | 72 | 72 | 4 h | 4 h | 4 h | lun 27/11/23 | RAD_1.3 | ES |
| 25 | 1.1.1.2.1.2.2 | Sequence Diagram | 6d | 2023-11-24 A | 2023-11-29 A | 21 | 100% |  | 2023-11-24 | 2023-11-29 | 6d |  | finish no earlier than 2023-11-29 |  | Diana Lavinia Cojoc [3.1%]; Emanuele Setaro [3.1%]; Ernesto De Iesu [3.1%]; Gabriele Di Stefano [3.1%]; Michela Percaccio [3.1%]; Roberta Galluzzo [3.1%] | 9h | 9h | 162 | 162 | 162 | 9 h | 9 h | 9 h | mer 29/11/23 | RAD_1.4 | RG |
| 26 | 1.1.1.3 | Checklist RAD | 2d | 2023-11-30 A | 2023-12-01 A | 25 | 100% |  | 2023-11-30 | 2023-12-02 | 3d? |  | finish no earlier than 2023-12-01 |  | Diana Lavinia Cojoc [4.2%]; Emanuele Setaro [4.2%] | 2h | 2h | 36 | 36 | 36 | 2 h | 2 h | 2 h | sab 02/12/23 | RAD_1.5 | DLC |
| 27 | 1.1.1.4 | Integrazione RAD | 2d | 2023-11-30 A | 2023-12-01 A | 25 | 100% |  | 2023-11-30 | 2023-12-02 | 3d |  | finish no earlier than 2023-12-01 |  | Gabriele Di Stefano | 1h | 1h | 18 | 18 | 18 | 1 h | 1 h | 1 h | sab 02/12/23 | RAD_1.6 | GDS |
| 28 | 1.1.1.5 | Studio del dominio del problema | 23d | 2023-10-16 A | 2023-11-07 A |  | 100% |  | 2023-10-16 | 2023-11-07 | 23d |  | start no earlier than 2023-10-16 |  | Diana Lavinia Cojoc [0.3%]; Emanuele Setaro [0.3%]; Ernesto De Iesu [0.3%]; Gabriele Di Stefano [0.3%]; Michela Percaccio [0.3%]; Roberta Galluzzo [0.3%] | 3h | 3h | 54 | 54 | 54 | 3 h | 3 h | 3 h | mar 07/11/23 | Action Item | DLC |

| ID | WBS | Task | Type | Duration | Start | Finish | Predecessors | Complete | Baseline start | Baseline finish | Baseline duration | Constraint | Resources | Work | Actual work | Cost | Baseline cost | Actual cost | Text12 | Text19 | Text1 | Accountability |
| --- | --- | --- | --- | --- | --- | --- | --- | --- | --- | --- | --- | --- | --- | --- | --- | --- | --- | --- | --- | --- | --- | --- |
| 29 | 1.1.2 | **SDD** |  | 18d? | 2023-11-30 A | 2023-12-17 A | 25 | 100% | 2023-11-30 | 2023-12-17 | 18d? |  |  | 50.5h | 50.5h | 909 | 918 | 909 | 33 h | sab 09/12/23 |  |  |
| 30 | 1.1.2.1 | Introduzione SDD e architettura sistema corrente |  | 2d? | 2023-11-30 A | 2023-12-01 A | 25 | 100% | 2023-11-30 | 2023-12-01 | 2d? |  | Ernesto De Iesu [6.2%] | 1h | 1h | 18 | 18 | 18 | 1 h | ven 01/12/23 | SDD_0.1 | EDI |
| 31 | 1.1.2.2 | Design Goals e Trade-offs |  | 2d | 2023-11-30 A | 2023-12-01 A | 25 | 100% | 2023-11-30 | 2023-12-01 | 2d | finish no earlier than 2023-12-01 | Michela Percaccio [6.2%]; Roberta Galluzzo [6.2%]; Diana Lavinia Cojoc [6.2%]; Emanuele Setaro [6.2%]; Ernesto De Iesu [6.2%]; Gabriele Di Stefano [6.2%] | 6h | 6h | 108 | 108 | 108 | 6 h | ven 01/12/23 | SDD_0.2 | MP |
| 32 | 1.1.2.3 | **Architettura Sistema Proposto** |  | 7d | 2023-12-02 A | 2023-12-08 A | 31 | 100% | 2023-12-02 | 2023-12-07 | 6d |  |  | 22.5h | 22.5h | 405 | 414 | 405 | 23 h | gio 07/12/23 |  |  |
| 33 | 1.1.2.3.1 | Decomposizione in sottosistemi | manual | 3d | 2023-12-02 A | 2023-12-04 A | 31 | 100% | 2023-12-02 | 2023-12-04 | 3d |  | Roberta Galluzzo; Emanuele Setaro; Diana Lavinia Cojoc; Gabriele Di Stefano | 5.5h | 5.5h | 99 | 108 | 99 | 6 h | lun 04/12/23 | SDD_0.3 | ES |
| 34 | 1.1.2.3.2 | Mapping Hardware/Software | manual | 3d | 2023-12-02 A | 2023-12-04 A | 31 | 100% | 2023-12-02 | 2023-12-04 | 3d |  | Ernesto De Iesu; Michela Percaccio | 2h | 2h | 36 | 36 | 36 | 2 h | lun 04/12/23 | SDD_0.4 | EDI |
| 35 | 1.1.2.3.3 | Gestione dei dati persistenti |  | 4d | 2023-12-05 A | 2023-12-08 A | 33 | 100% | 2023-12-05 | 2023-12-07 | 3d | finish no earlier than 2023-12-08 | Ernesto De Iesu; Gabriele Di Stefano; Michela Percaccio; Roberta Galluzzo; Diana Lavinia Cojoc; Emanuele Setaro [8.3%] | 12h | 12h | 216 | 216 | 216 | 12 h | gio 07/12/23 | SDD_0.5 | GDS |
| 36 | 1.1.2.3.4 | Controllo accessi e sicurezza | manual | 3d | 2023-12-05 A | 2023-12-07 A | 33 | 100% | 2023-12-05 | 2023-12-07 | 3d |  | Michela Percaccio | 1.5h | 1.5h | 27 | 27 | 27 | 1,5 h | gio 07/12/23 | SDD_0.6 | MP |
| 37 | 1.1.2.3.5 | Controllo flusso globale del sistema | manual | 3d | 2023-12-05 A | 2023-12-07 A | 33 | 100% | 2023-12-05 | 2023-12-07 | 3d |  | Ernesto De Iesu | 0.5h | 0.5h | 9 | 9 | 9 | 0,5 h | gio 07/12/23 | SDD_0.7 | EDI |
| 38 | 1.1.2.3.6 | Condizioni limite | manual | 3d | 2023-12-05 A | 2023-12-07 A | 34 | 100% | 2023-12-05 | 2023-12-07 | 3d |  | Diana Lavinia Cojoc | 1h | 1h | 18 | 18 | 18 | 1 h | gio 07/12/23 | SDD_0.8 | DLC |
| 39 | 1.1.2.4 | Funzionalità dei sottosistemi | manual | 3d | 2023-12-05 A | 2023-12-07 A | 33, 34 | 100% | 2023-12-05 | 2023-12-07 | 3d |  | Emanuele Setaro | 1h | 1h | 18 | 18 | 18 | 1 h | gio 07/12/23 | SDD_0.9 | ES |
| 40 | 1.1.2.5 | Checklist SDD |  | 2d | 2023-12-09 A | 2023-12-10 A | 32, 39 | 100% | 2023-12-08 | 2023-12-09 | 2d | start no earlier than 2023-12-08 | Roberta Galluzzo [0.2%]; Gabriele Di Stefano [6.1%] | 1h | 1h | 18 | 18 | 18 | 1 h | sab 09/12/23 | SDD_0.10 | RG |
| 41 | 1.1.2.6 | Integrazione SDD |  | 2d | 2023-12-09 A | 2023-12-10 A | 32, 39 | 100% | 2023-12-08 | 2023-12-09 | 2d | start no earlier than 2023-12-08 | Ernesto De Iesu | 1h | 1h | 18 | 18 | 18 | 1 h | sab 09/12/23 | SDD_0.11 | ES |
| 42 | 1.1.2.7 | Presentazione intermedia |  | 5d? | 2023-12-13 A | 2023-12-17 A | 41, 57, 60 | 100% | 2023-12-13 | 2023-12-17 | 5d? | start no earlier than 2023-12-13 | Diana Lavinia Cojoc; Emanuele Setaro; Ernesto De Iesu; Gabriele Di Stefano; Michela Percaccio; Roberta Galluzzo | 18h | 18h | 324 | 324 | 324 |  |  |  |  |
| 43 | 1.1.3 | Consegna Intermedia |  | 1d | 2023-12-13 A | 2023-12-13 A | 60, 3, 29, 57 | 100% | 2023-12-13 | 2023-12-13 | 1d |  |  |  |  |  |  |  | 0 h | mer 13/12/23 |  |  |
| 44 | 1.1.4 | **ODD** |  | 24d? | 2023-12-14 A | 2024-01-06 A | 29 | 100% | 2023-12-14 | 2024-01-06 | 24d? |  |  | 30.25h | 30.25h | 544.5 | 522 | 544.5 | 29 h | sab 06/01/24 |  |  |
| 45 | 1.1.4.1 | Object Design Goals e Trade-off |  | 4d | 2023-12-14 A | 2023-12-17 A | 29 | 100% | 2023-12-14 | 2023-12-17 | 4d | start no earlier than 2023-12-14 | Diana Lavinia Cojoc [1.6%]; Emanuele Setaro [1.6%]; Michela Percaccio [1.6%]; Roberta Galluzzo [1.6%] | 2h | 2h | 36 | 36 | 36 | 2 h | dom 17/12/23 | ODD_0.1 | RG |
| 46 | 1.1.4.2 | COTS, riferimenti, glossario e linee guida documentazione |  | 4d | 2023-12-14 A | 2023-12-17 A | 29 | 100% | 2023-12-14 | 2023-12-17 | 4d | start no earlier than 2023-12-14 | Ernesto De Iesu; Gabriele Di Stefano | 1h | 1h | 18 | 18 | 18 | 1 h | dom 17/12/23 | ODD_0.2 | GDS |
| 47 | 1.1.4.3 | Design Patterns |  | 3d | 2023-12-18 A | 2023-12-20 A | 45 | 100% | 2023-12-18 | 2023-12-20 | 3d | start no earlier than 2023-12-18 | Diana Lavinia Cojoc; Emanuele Setaro; Ernesto De Iesu; Gabriele Di Stefano; Michela Percaccio; Roberta Galluzzo | 6h | 6h | 108 | 108 | 108 | 6 h | mer 20/12/23 | ODD_0.3 | DLC |
| 48 | 1.1.4.4 | Packages |  | 3d? | 2023-12-21 A | 2023-12-23 A | 47 | 100% | 2023-12-21 | 2023-12-23 | 3d? | finish no earlier than 2023-12-23 | Diana Lavinia Cojoc [12.5%]; Emanuele Setaro [12.5%]; Ernesto De Iesu [12.5%]; Gabriele Di Stefano [12.5%]; Michela Percaccio [12.5%]; Roberta Galluzzo [12.5%] | 6h | 6h | 108 | 108 | 108 | 6 h | sab 23/12/23 | ODD_0.4 | MP |
| 49 | 1.1.4.5 | Class interfaces |  | 4d? | 2023-12-24 A | 2023-12-27 A | 48 | 100% | 2023-12-24 | 2023-12-29 | 6d? | finish no earlier than 2023-12-27 | Diana Lavinia Cojoc [3.1%]; Emanuele Setaro [3.1%]; Ernesto De Iesu [3.1%]; Gabriele Di Stefano [3.1%]; Michela Percaccio [3.1%]; Roberta Galluzzo [3.1%] | 6h | 6h | 108 | 108 | 108 | 6 h | ven 29/12/23 | ODD_0.5 | ES |
| 50 | 1.1.4.6 | Class Diagram |  | 5d? | 2023-12-30 A | 2024-01-03 A |  | 100% | 2023-12-30 | 2024-01-03 | 5d? |  | Diana Lavinia Cojoc [1.2%]; Emanuele Setaro [2.5%]; Ernesto De Iesu [2.5%]; Gabriele Di Stefano [2.5%]; Michela Percaccio [2.5%]; Roberta Galluzzo [2.5%] | 7.25h | 7.25h | 130.5 | 108 | 130.5 | 6 h | mer 03/01/24 | ODD_0.6 | EDI |
| 51 | 1.1.4.7 | Checklist ODD |  | 3d? | 2024-01-04 A | 2024-01-06 A | 50 | 100% | 2024-01-04 | 2024-01-06 | 3d? | finish no earlier than 2024-01-06 | Michela Percaccio [4.2%] | 1h | 1h | 18 | 18 | 18 | 1 h | sab 06/01/24 | ODD_0.7 | MP |
| 52 | 1.1.4.8 | Integrazione ODD |  | 3d? | 2024-01-04 A | 2024-01-06 A | 50 | 100% | 2024-01-04 | 2024-01-06 | 3d? | finish no earlier than 2024-01-06 | Diana Lavinia Cojoc | 1h | 1h | 18 | 18 | 18 | 1 h | sab 06/01/24 | ODD_0.6 | RG |

| ID | WBS | Task | Duration | Start | Finish | Predecessors | Complete | Baseline start | Baseline finish | Baseline duration | Constraint | Deadline | Calendar | Resources | Work | Actual work | Cost | Baseline cost | Actual cost | Text12 | Text19 | Text1 | Accountability |
| --- | --- | --- | --- | --- | --- | --- | --- | --- | --- | --- | --- | --- | --- | --- | --- | --- | --- | --- | --- | --- | --- | --- | --- |
| 53 | 1.1.5 | **Training e Implementazione** | 24d | 2024-01-07 A | 2024-01-30 A | 44 | 100% | 2024-01-07 | 2024-01-28 | 22d |  |  |  |  | 97.5h | 97.5h | 1,755 | 1,944 | 1,755 | 108 h | dom 28/01/24 |  |  |
| 54 | 1.1.5.1 | Backend e Database | 24d | 2024-01-07 A | 2024-01-30 A | 44, 50 | 100% | 2024-01-07 | 2024-01-28 | 22d | finish no earlier than 2024-01-30 |  |  | Michela Percaccio [16.7%]; Diana Lavinia Cojoc [10.2%]; Roberta Galluzzo [8.3%]; Gabriele Di Stefano [7.8%] | 33.5h | 33.5h | 603 | 972 | 603 | 54 h | dom 28/01/24 | IM_0.1 | GDS |
| 55 | 1.1.5.2 | Frontend | 24d | 2024-01-07 A | 2024-01-30 A | 44 | 100% | 2024-01-07 | 2024-01-28 | 22d | finish no earlier than 2024-01-30 |  |  | Ernesto De Iesu; Michela Percaccio; Diana Lavinia Cojoc; Emanuele Setaro | 64h | 64h | 1,152 | 972 | 1,152 | 54 h | dom 28/01/24 | IM_0.2 | ES |
| 56 | 1.1.6 | **Testing** | 62d | 2023-12-08 A | 2024-02-07 A |  | 100% | 2023-12-08 | 2024-02-03 | 58d |  |  |  |  | 53.5h | 53.5h | 975 | 900 | 975 | 50 h | sab 03/02/24 |  |  |
| 57 | 1.1.6.1 | **Test Plan** | 5d | 2023-12-08 A | 2023-12-12 A |  | 100% | 2023-12-08 | 2023-12-12 | 5d |  |  |  |  | 14h | 14h | 264 | 252 | 264 | 14 h | mar 12/12/23 |  |  |
| 58 | 1.1.6.1.1 | Introduzione e approccio Test Plan | 2d | 2023-12-08 A | 2023-12-09 A | 15 | 100% | 2023-12-08 | 2023-12-09 | 2d | start no earlier than 2023-12-08 |  |  | Davide La Gamba [6.2%]; Gerardo Festa [6.2%] | 2h | 2h | 48 | 36 | 48 | 2 h | sab 09/12/23 | TP_0.1 | GF |
| 59 | 1.1.6.1.2 | Test Case | 3d | 2023-12-10 A | 2023-12-12 A | 58 | 100% | 2023-12-10 | 2023-12-12 | 3d | finish no earlier than 2023-12-12 |  |  | Diana Lavinia Cojoc [8.3%]; Emanuele Setaro [8.3%]; Ernesto De Iesu [8.3%]; Gabriele Di Stefano [8.3%]; Michela Percaccio [8.3%]; Roberta Galluzzo [8.3%] | 12h | 12h | 216 | 216 | 216 | 12 h | mar 12/12/23 | TP_0.2 | ES |
| 60 | 1.1.6.2 | Test Case Specification | 3d | 2023-12-10 A | 2023-12-12 A |  | 100% | 2023-12-10 | 2023-12-12 | 3d | start no earlier than 2023-12-10 |  |  | Diana Lavinia Cojoc; Emanuele Setaro; Ernesto De Iesu; Gabriele Di Stefano; Michela Percaccio; Roberta Galluzzo | 12h | 12h | 216 | 216 | 216 | 12 h | mar 12/12/23 | TCS | EDI |
| 61 | 1.1.6.3 | Test di Unità | 7d | 2024-02-01 A | 2024-02-07 A | 54 | 100% | 2024-01-29 | 2024-02-03 | 6d | finish no earlier than 2024-02-07 |  |  | Diana Lavinia Cojoc [4.5%]; Emanuele Setaro [2.7%]; Ernesto De Iesu [2.7%]; Gabriele Di Stefano [2.7%]; Michela Percaccio [2.7%]; Roberta Galluzzo [2.7%] | 10h | 10h | 180 | 162 | 180 | 9 h | sab 03/02/24 | TU | GDS |
| 62 | 1.1.6.4 | Test di Sistema | 6d | 2024-01-31 A | 2024-02-05 A | 53 | 100% | 2024-01-29 | 2024-02-03 | 6d | finish no earlier than 2024-02-03 |  |  | Diana Lavinia Cojoc [3.1%]; Emanuele Setaro [3.1%]; Ernesto De Iesu [3.1%]; Gabriele Di Stefano [3.1%]; Michela Percaccio [5.2%]; Roberta Galluzzo [3.1%] | 10h | 10h | 180 | 162 | 180 | 9 h | sab 03/02/24 | TS | DLC |
| 63 | 1.1.6.5 | Test incident report | 7d | 2024-02-01 A | 2024-02-07 A | 53 | 100% | 2024-01-29 | 2024-02-03 | 6d | finish no earlier than 2024-02-07 |  |  | Diana Lavinia Cojoc [1.8%]; Emanuele Setaro [0.9%]; Ernesto De Iesu [0.9%]; Gabriele Di Stefano [0.9%]; Michela Percaccio [0.9%]; Roberta Galluzzo [0.9%] | 3.5h | 3.5h | 63 | 54 | 63 | 3 h | sab 03/02/24 | TIR | MP |
| 64 | 1.1.6.6 | Test summary report | 8d | 2024-01-31 A | 2024-02-07 A | 53 | 100% | 2024-01-29 | 2024-02-03 | 6d | finish no earlier than 2024-02-07 |  |  | Diana Lavinia Cojoc [2.3%]; Emanuele Setaro [0.8%]; Ernesto De Iesu [0.8%]; Gabriele Di Stefano [0.8%]; Michela Percaccio [0.8%]; Roberta Galluzzo [0.8%] | 4h | 4h | 72 | 54 | 72 | 3 h | sab 03/02/24 | TSR | RG |
| 65 | 1.1.7 | **Manuali** | 7d? | 2024-01-31 A | 2024-02-06 A |  | 100% | 2024-01-29 | 2024-02-06 | 9d? |  |  |  |  | 15.75h | 15.75h | 283.5 | 324 | 283.5 | 6 h | sab 03/02/24 |  |  |
| 66 | 1.1.7.1 | Manuale installazione | 6d | 2024-01-31 A | 2024-02-05 A | 53 | 100% | 2024-01-29 | 2024-02-03 | 6d | finish no earlier than 2024-02-03 |  |  | Ernesto De Iesu [12.5%]; Gabriele Di Stefano [12.5%] | 2h | 2h | 36 | 36 | 36 | 2 h | sab 03/02/24 | MA_0.1 | EDI |
| 67 | 1.1.7.2 | Manuale utente | 6d | 2024-01-31 A | 2024-02-05 A | 53 | 100% | 2024-01-29 | 2024-02-03 | 6d | start no earlier than 2024-01-31 |  |  | Emanuele Setaro [2.1%]; Michela Percaccio [3.1%]; Roberta Galluzzo [2.1%]; Diana Lavinia Cojoc [3.1%] | 5h | 5h | 90 | 72 | 90 | 4 h | sab 03/02/24 | MA_0.2 | DLC |
| 68 | 1.1.7.3 | Presentazione finale | 3d? | 2024-02-04 A | 2024-02-06 A |  | 100% | 2024-02-04 | 2024-02-06 | 3d? | finish no earlier than 2024-02-06 |  |  | Diana Lavinia Cojoc [8.3%]; Emanuele Setaro [1%]; Ernesto De Iesu [8.3%]; Gabriele Di Stefano [8.3%]; Michela Percaccio [2.1%]; Roberta Galluzzo [8.3%] | 8.75h | 8.75h | 157.5 | 216 | 157.5 |  |  |  |  |
| 69 | 1.1.8 | **Meetings** | 64d | 2023-10-16 A | 2023-12-18 A |  | 100% | 2023-10-16 | 2023-12-18 | 64d |  |  |  |  | 97h | 97h | 1,893 | 1,911 | 1,893 | 97 h | lun 18/12/23 |  |  |
| 70 | 1.1.8.1 | KickOffMeeting | 1d | 2023-10-16 A | 2023-10-16 A |  | 100% | 2023-10-16 | 2023-10-16 | 1d |  |  |  | Davide La Gamba [9.4%]; Diana Lavinia Cojoc [9.4%]; Emanuele Setaro [9.4%]; Ernesto De Iesu [9.4%]; Gabriele Di Stefano [9.4%]; Gerardo Festa [9.4%]; Michela Percaccio [9.4%]; Roberta Galluzzo [9.4%] | 6h | 6h | 117 | 117 | 117 | 6 h | lun 16/10/23 |  | DLG |
| 71 | 1.1.8.2 | Team Building Meeting | 0.91d | 2023-10-16 A | 2023-10-16 A |  | 100% | 2023-10-16 | 2023-10-16 | 0.91d | finish no earlier than 2023-10-16 |  |  | Davide La Gamba [10.3%]; Diana Lavinia Cojoc [10.3%]; Emanuele Setaro [10.3%]; Ernesto De Iesu [10.3%]; Gabriele Di Stefano [10.3%]; Gerardo Festa [10.3%]; Michela Percaccio [10.3%]; Roberta Galluzzo [10.3%] | 6h | 6h | 117 | 117 | 117 | 6 h | lun 16/10/23 |  | GF |
| 72 | 1.1.8.3 | Meeting 2 | 1d | 2023-10-17 A | 2023-10-17 A | 71 | 100% | 2023-10-23 | 2023-10-23 | 1d |  |  |  | Davide La Gamba [18.8%]; Diana Lavinia Cojoc [18.8%]; Emanuele Setaro [18.8%]; Gabriele Di Stefano [18.8%]; Gerardo Festa [18.8%]; Michela Percaccio [18.8%]; Roberta Galluzzo [18.8%]; Ernesto De Iesu [18.8%] | 12h | 12h | 234 | 234 | 234 | 12 h | lun 23/10/23 |  | RG |
| 73 | 1.1.8.4 | Meeting 3 | 1d | 2023-10-30 A | 2023-10-30 A | 72 | 100% | 2023-10-30 | 2023-10-30 | 1d | start no earlier than 2023-10-30 |  |  | Davide La Gamba [18.8%]; Diana Lavinia Cojoc [18.8%]; Emanuele Setaro [18.8%]; Ernesto De Iesu [18.8%]; Gabriele Di Stefano [18.8%]; Gerardo Festa [18.8%]; Michela Percaccio [18.8%]; Roberta Galluzzo [18.8%] | 12h | 12h | 234 | 234 | 234 | 12 h | lun 30/10/23 |  | DLC |
| 74 | 1.1.8.5 | Meeting 4 | 1d | 2023-11-07 A | 2023-11-07 A | 73 | 100% | 2023-11-07 | 2023-11-07 | 1d | start no earlier than 2023-11-07 |  |  | Davide La Gamba [18.8%]; Diana Lavinia Cojoc [18.8%]; Emanuele Setaro [18.8%]; Ernesto De Iesu [18.8%]; Gabriele Di Stefano [18.8%]; Gerardo Festa [18.8%]; Michela Percaccio [18.8%]; Roberta Galluzzo [18.8%] | 12h | 12h | 234 | 234 | 234 | 12 h | mar 07/11/23 |  | GDS |
| 75 | 1.1.8.6 | Meeting 5 | 1d | 2023-11-13 A | 2023-11-13 A | 74 | 100% | 2023-11-13 | 2023-11-13 | 1d | start no earlier than 2023-11-13 |  |  | Davide La Gamba [18.8%]; Diana Lavinia Cojoc [18.8%]; Emanuele Setaro [18.8%]; Ernesto De Iesu [18.8%]; Gabriele Di Stefano [18.8%]; Gerardo Festa [18.8%]; Michela Percaccio [18.8%]; Roberta Galluzzo [18.8%] | 12h | 12h | 234 | 234 | 234 | 12 h | lun 13/11/23 |  | ES |
| 76 | 1.1.8.7 | Meeting 6 | 0.12d | 2023-11-20 A | 2023-11-20 A | 75 | 100% | 2023-11-20 | 2023-11-20 | 0.12d | finish no earlier than 2023-11-20 | 2023-11-20 | 24 ore | Diana Lavinia Cojoc; Emanuele Setaro; Ernesto De Iesu; Gerardo Festa; Michela Percaccio; Roberta Galluzzo; Davide La Gamba | 7h | 7h | 138 | 156 | 138 | 7 h | lun 20/11/23 |  | MP |
| 77 | 1.1.8.8 | Meeting 7 | 1d | 2023-11-27 A | 2023-11-27 A | 76 | 100% | 2023-11-27 | 2023-11-27 | 1d | finish no earlier than 2023-11-27 |  |  | Davide La Gamba [9.4%]; Diana Lavinia Cojoc [9.4%]; Emanuele Setaro [9.4%]; Ernesto De Iesu [9.4%]; Gabriele Di Stefano [9.4%]; Gerardo Festa [9.4%]; Michela Percaccio [9.4%]; Roberta Galluzzo [9.4%] | 6h | 6h | 117 | 117 | 117 | 6 h | lun 27/11/23 |  | EDI |
| 78 | 1.1.8.9 | Meeting 8 | 1d | 2023-12-04 A | 2023-12-04 A | 77 | 100% | 2023-12-04 | 2023-12-04 | 1d | start no earlier than 2023-12-04 |  |  | Davide La Gamba [12.5%]; Diana Lavinia Cojoc [12.5%]; Emanuele Setaro [12.5%]; Ernesto De Iesu [12.5%]; Gabriele Di Stefano [12.5%]; Gerardo Festa [12.5%]; Michela Percaccio [12.5%]; Roberta Galluzzo [12.5%] | 8h | 8h | 156 | 156 | 156 | 8 h | lun 04/12/23 |  | RG |
| 79 | 1.1.8.10 | Meeting 9 | 1d | 2023-12-11 A | 2023-12-11 A | 78 | 100% | 2023-12-11 | 2023-12-11 | 1d | start no earlier than 2023-12-11 |  |  | Davide La Gamba [12.5%]; Diana Lavinia Cojoc [12.5%]; Emanuele Setaro [12.5%]; Ernesto De Iesu [12.5%]; Gabriele Di Stefano [12.5%]; Gerardo Festa [12.5%]; Michela Percaccio [12.5%]; Roberta Galluzzo [12.5%] | 8h | 8h | 156 | 156 | 156 | 8 h | lun 11/12/23 |  | DLC |
| 80 | 1.1.8.11 | Meeting 10 | 1d | 2023-12-18 A | 2023-12-18 A | 79 | 100% | 2023-12-18 | 2023-12-18 | 1d | start no earlier than 2023-12-18 |  |  | Davide La Gamba [12.5%]; Diana Lavinia Cojoc [12.5%]; Emanuele Setaro [12.5%]; Ernesto De Iesu [12.5%]; Gabriele Di Stefano [12.5%]; Gerardo Festa [12.5%]; Michela Percaccio [12.5%]; Roberta Galluzzo [12.5%] | 8h | 8h | 156 | 156 | 156 | 8 h | lun 18/12/23 |  | ES |

| ID | WBS | Task | Type | Duration | Start | Finish | Predecessors | Complete | Baseline start | Baseline finish | Baseline duration | Constraint | Resources | Work | Actual work | Cost | Baseline cost | Actual cost |
| --- | --- | --- | --- | --- | --- | --- | --- | --- | --- | --- | --- | --- | --- | --- | --- | --- | --- | --- |
| 81 | 1.1.9 | **Project Management** |  | 135d? | 2023-09-25 A | 2024-02-06 A |  | 100% | 2023-09-25 | 2024-02-06 | 135d? |  |  | 100h | 100h | 2,400 | 2,400 | 2,400 |
| 82 | 1.1.9.1 | **Risk Management** |  | 79d? | 2023-11-19 A | 2024-02-05 A |  | 100% | 2023-11-19 | 2024-02-05 | 79d? |  |  | 22h | 22h | 528 | 528 | 528 |
| 83 | 1.1.9.1.1 | Risk Management Plan |  | 12d | 2023-11-19 A | 2023-11-30 A |  | 100% | 2023-11-19 | 2023-11-30 | 12d | finish no earlier than 2023-11-30 | Davide La Gamba; Gerardo Festa | 2h | 2h | 48 | 48 | 48 |
| 84 | 1.1.9.1.2 | Risk Register - Period I |  | 14d? | 2023-11-19 A | 2023-12-02 A |  | 100% | 2023-11-19 | 2023-12-02 | 14d? | finish no earlier than 2023-12-02 | Davide La Gamba; Gerardo Festa | 4h | 4h | 96 | 96 | 96 |
| 85 | 1.1.9.1.3 | Risk Register - Period II |  | 15d? | 2023-12-03 A | 2023-12-17 A | 84 | 100% | 2023-12-03 | 2023-12-17 | 15d? | start no earlier than 2023-12-03 | Davide La Gamba; Gerardo Festa | 4h | 4h | 96 | 96 | 96 |
| 86 | 1.1.9.1.4 | Risk Register - Period III | milestone | 16d? | 2023-12-18 A | 2024-01-02 A | 85 | 100% | 2023-12-18 | 2024-01-02 | 16d? | start no earlier than 2023-12-18 | Davide La Gamba; Gerardo Festa | 4h | 4h | 96 | 96 | 96 |
| 87 | 1.1.9.1.5 | Risk Register - Period IV |  | 15d? | 2024-01-03 A | 2024-01-17 A | 86 | 100% | 2024-01-03 | 2024-01-17 | 15d? |  | Davide La Gamba; Gerardo Festa | 4h | 4h | 96 | 96 | 96 |
| 88 | 1.1.9.1.6 | Risk Register - Period V |  | 19d? | 2024-01-18 A | 2024-02-05 A | 87 | 100% | 2024-01-18 | 2024-02-05 | 19d? | start no earlier than 2024-01-18 | Davide La Gamba; Gerardo Festa | 4h | 4h | 96 | 96 | 96 |
| 89 | 1.1.9.2 | **Scope Management** |  | 134d? | 2023-09-25 A | 2024-02-05 A |  | 100% | 2023-09-25 | 2024-02-05 | 134d? |  |  | 12h | 12h | 288 | 288 | 288 |
| 90 | 1.1.9.2.1 | Statement of Work |  | 13d? | 2023-09-25 A | 2023-10-07 A |  | 100% | 2023-09-25 | 2023-10-07 | 13d? | finish no earlier than 2023-10-07 | Davide La Gamba; Gerardo Festa | 2h | 2h | 48 | 48 | 48 |
| 91 | 1.1.9.2.2 | Scope statement |  | 16d? | 2023-10-20 A | 2023-11-04 A |  | 100% | 2023-10-20 | 2023-11-04 | 16d? | finish no earlier than 2023-11-04 | Davide La Gamba; Gerardo Festa | 4h | 4h | 96 | 96 | 96 |
| 92 | 1.1.9.2.3 | WBS |  | 100d? | 2023-10-29 A | 2024-02-05 A |  | 100% | 2023-10-29 | 2024-02-05 | 100d? | finish no earlier than 2024-02-05 | Davide La Gamba; Gerardo Festa | 6h | 6h | 144 | 144 | 144 |
| 93 | 1.1.9.3 | **Human Resource Management** |  | 127d? | 2023-10-03 A | 2024-02-06 A |  | 100% | 2023-10-03 | 2024-02-06 | 127d? |  |  | 12h | 12h | 288 | 288 | 288 |
| 94 | 1.1.9.3.1 | Team Contract |  | 9d? | 2023-10-15 A | 2023-10-23 A |  | 100% | 2023-10-15 | 2023-10-23 | 9d? | start no earlier than 2023-10-15 | Davide La Gamba; Gerardo Festa | 4h | 4h | 96 | 96 | 96 |
| 95 | 1.1.9.3.2 | Team Members Evaluations |  | 91d? | 2023-11-08 A | 2024-02-06 A |  | 100% | 2023-11-08 | 2024-02-06 | 91d? | finish no earlier than 2024-02-06 | Davide La Gamba; Gerardo Festa | 5h | 5h | 120 | 120 | 120 |
| 96 | 1.1.9.3.3 | Presentazione iniziale |  | 6d? | 2023-10-03 A | 2023-10-08 A |  | 100% | 2023-10-03 | 2023-10-08 | 6d? | finish no earlier than 2023-10-08 | Davide La Gamba; Gerardo Festa | 3h | 3h | 72 | 72 | 72 |
| 97 | 1.1.9.4 | **Stakeholder Management** |  | 72d? | 2023-11-09 A | 2024-01-19 A |  | 100% | 2023-11-09 | 2024-01-19 | 72d? |  |  | 4h | 4h | 96 | 96 | 96 |
| 98 | 1.1.9.4.1 | Stakeholder Register |  | 72d? | 2023-11-09 A | 2024-01-19 A |  | 100% | 2023-11-09 | 2024-01-19 | 72d? | finish no earlier than 2024-01-19 | Davide La Gamba; Gerardo Festa | 4h | 4h | 96 | 96 | 96 |
| 99 | 1.1.9.5 | Presentazione intermedia |  | 6d? | 2023-12-13 A | 2023-12-18 A |  | 100% | 2023-12-13 | 2023-12-18 | 6d? | start no earlier than 2023-12-13 | Davide La Gamba; Gerardo Festa | 5h | 5h | 120 | 120 | 120 |
| 100 | 1.1.9.6 | Presentazione Finale |  | 6d? | 2024-02-01 A | 2024-02-06 A |  | 100% | 2024-02-01 | 2024-02-06 | 6d? | finish no earlier than 2024-02-06 | Davide La Gamba; Gerardo Festa | 7h | 7h | 168 | 168 | 168 |
| 101 | 1.1.9.7 | Business Case |  | 76d? | 2023-10-05 A | 2023-12-19 A |  | 100% | 2023-10-05 | 2023-12-19 | 76d? | finish no earlier than 2023-12-19 | Davide La Gamba; Gerardo Festa | 6h | 6h | 144 | 144 | 144 |
| 102 | 1.1.9.8 | **Time Management** |  | 100d? | 2023-10-29 A | 2024-02-05 A |  | 100% | 2023-10-29 | 2024-02-05 | 100d? |  |  | 16h | 16h | 384 | 384 | 384 |
| 103 | 1.1.9.8.1 | Project Schedule |  | 100d? | 2023-10-29 A | 2024-02-05 A |  | 100% | 2023-10-29 | 2024-02-05 | 100d? | finish no earlier than 2024-02-05 | Davide La Gamba; Gerardo Festa | 13h | 13h | 312 | 312 | 312 |
| 104 | 1.1.9.8.2 | RACI |  | 11d? | 2023-12-09 A | 2023-12-19 A |  | 100% | 2023-12-09 | 2023-12-19 | 11d? | finish no earlier than 2023-12-19 | Davide La Gamba [3.4%]; Gerardo Festa [3.4%] | 3h | 3h | 72 | 72 | 72 |

| ID | WBS | Task | Type | Duration | Start | Finish | Predecessors | Complete | Baseline start | Baseline finish | Baseline duration | Total slack | Free slack | Constraint | Resources | Work | Actual work | Cost | Baseline cost | Actual cost |
| --- | --- | --- | --- | --- | --- | --- | --- | --- | --- | --- | --- | --- | --- | --- | --- | --- | --- | --- | --- | --- |
| 105 | 1.1.9.9 | **Cost Management** |  | 70d? | 2023-11-29 A | 2024-02-06 A |  | 100% | 2023-11-29 | 2024-02-06 | 70d? |  |  |  |  | 10h | 10h | 240 | 240 | 240 |
| 106 | 1.1.9.9.1 | Status Report - Period I |  | 7d? | 2023-11-29 A | 2023-12-05 A |  | 100% | 2023-11-29 | 2023-12-05 | 7d? |  |  | finish no earlier than 2023-12-05 | Davide La Gamba; Gerardo Festa | 2h | 2h | 48 | 48 | 48 |
| 107 | 1.1.9.9.2 | Status Report - Period II |  | 6d? | 2023-12-14 A | 2023-12-19 A |  | 100% | 2023-12-14 | 2023-12-19 | 6d? |  |  | start no earlier than 2023-12-14 | Davide La Gamba; Gerardo Festa | 2h | 2h | 48 | 48 | 48 |
| 108 | 1.1.9.9.3 | Status Report - Period III |  | 2d? | 2024-01-02 A | 2024-01-03 A |  | 100% | 2024-01-02 | 2024-01-03 | 2d? |  |  | finish no earlier than 2024-01-03 | Davide La Gamba; Gerardo Festa | 3h | 3h | 72 | 72 | 72 |
| 109 | 1.1.9.9.4 | Status Report - Period IV |  | 6d? | 2024-02-01 A | 2024-02-06 A |  | 100% | 2024-02-01 | 2024-02-06 | 6d? |  |  | finish no earlier than 2024-02-06 | Davide La Gamba; Gerardo Festa | 3h | 3h | 72 | 72 | 72 |
| 110 | 1.1.9.10 | **Integration Management** |  | 68d? | 2023-10-15 A | 2023-12-21 A |  | 100% | 2023-10-15 | 2023-12-21 | 68d? |  |  |  |  | 6h | 6h | 144 | 144 | 144 |
| 111 | 1.1.9.10.1 | Project Charter |  | 26d? | 2023-10-15 A | 2023-11-09 A |  | 100% | 2023-10-15 | 2023-11-09 | 26d? |  |  | finish no earlier than 2023-11-09 | Davide La Gamba; Gerardo Festa | 4h | 4h | 96 | 96 | 96 |
| 112 | 1.1.9.10.2 | Configuration Management |  | 1d? | 2023-12-21 A | 2023-12-21 A |  | 100% | 2023-12-21 | 2023-12-21 | 1d? |  |  |  | Davide La Gamba; Gerardo Festa | 2h | 2h | 48 | 48 | 48 |
| 113 | 1.1.10 | Consegna finale | milestone | 0d | 2024-02-07 | 2024-02-07 | 3, 29, 43, 44, 53, 56, 65, 69 |  |  | 2024-02-03 |  | 0d |  | start no earlier than 2024-02-07 |  |  |  |  |  |  |
| 114 | 1.2 | **Full Release** |  | 136d? | 2024-02-08 | 2024-06-22 | 113 |  | 2024-02-08 | 2024-06-22 | 136d? | 0d |  |  |  | 5083h |  | 93,135.5 | 93,135.5 |  |
| 115 | 1.2.1 | RAD |  | 12d | 2024-02-08 | 2024-02-19 | 2 |  | 2024-02-08 | 2024-02-19 | 12d | 28d | 0d | finish no earlier than 2024-02-19 | Backend Dev 1; Backend Dev 2; Frontend Dev 1; Frontend Dev 2; Data Scientist; Quality Assurance Analyst | 400h |  | 6,892.47 | 6,892.47 |  |
| 116 | 1.2.2 | SDD |  | 10d? | 2024-02-20 | 2024-02-29 | 2, 115 |  | 2024-02-20 | 2024-02-29 | 10d? | 28d |  | finish no earlier than 2024-02-29 | Backend Dev 1; Backend Dev 2; Frontend Dev 1; Frontend Dev 2; Quality Assurance Analyst; Data Scientist | 361h |  | 6,224.29 | 6,224.29 |  |
| 117 | 1.2.3 | ODD |  | 11d? | 2024-03-29 | 2024-04-08 | 2, 116 |  | 2024-03-29 | 2024-04-08 | 11d? | 0d |  | finish no earlier than 2024-04-08 | Backend Dev 1; Backend Dev 2; Frontend Dev 1; Frontend Dev 2; Quality Assurance Analyst; Data Scientist | 387h |  | 6,713.74 | 6,713.74 |  |
| 118 | 1.2.4 | Implementazione |  | 62d? | 2024-04-09 | 2024-06-09 | 2, 117 |  | 2024-04-09 | 2024-06-09 | 62d? | 0d |  | finish no earlier than 2024-06-09 | Backend Dev 2; Frontend Dev 1; Frontend Dev 2; Data Scientist; Backend Dev 1 | 2475h |  | 43,065 | 43,065 |  |
| 119 | 1.2.5 | Testing |  | 75d? | 2024-04-09 | 2024-06-22 | 2, 117 |  | 2024-04-09 | 2024-06-22 | 75d? | 0d |  | finish no earlier than 2024-06-09 | Quality Assurance Analyst | 600h |  | 9,600 | 9,600 |  |
| 120 | 1.2.6 | Project Management |  | 136d? | 2024-02-08 | 2024-06-22 | 2 |  | 2024-02-08 | 2024-06-22 | 136d? | 0d |  | finish no earlier than 2024-06-22 | PM1 [37.7%]; PM2 [37.7%] | 860h |  | 20,640 | 20,640 |  |
| 121 | 1.3 | **Advertisement** |  | 1287d? | 2024-06-23 | 2027-12-31 | 114 |  | 2024-06-23 | 2027-12-31 | 1287d? | 0d |  |  |  | 40h |  | 50,000 | 50,000 |  |
| 122 | 1.3.1 | Campagna pubblicitaria - Anno 0 |  | 192d? | 2024-06-23 | 2024-12-31 | 114 |  | 2024-06-23 | 2024-12-31 | 192d? | 0d |  | finish no earlier than 2024-12-31 | Campagna marketing 0 [1 Advertisement anno 1]; Reparto Marketing [0.7%] | 10h |  | 10,000 | 10,000 |  |
| 123 | 1.3.2 | Campagna pubblicitaria - Anno 1 |  | 365d? | 2025-01-01 | 2025-12-31 | 122 |  | 2025-01-01 | 2025-12-31 | 365d? | 0d |  | finish no earlier than 2025-12-31 | Reparto Marketing [0.3%]; Campagna marketing I [1 Adv anno 1] | 10h |  | 12,000 | 12,000 |  |
| 124 | 1.3.3 | Campagna pubblicitaria - Anno 2 |  | 365d? | 2026-01-01 | 2026-12-31 | 123 |  | 2026-01-01 | 2026-12-31 | 365d? | 0d |  | start no earlier than 2026-01-01 | Reparto Marketing [0.3%]; Campagna marketing II [1 Advertisement anno 2] | 10h |  | 13,000 | 13,000 |  |
| 125 | 1.3.4 | Campagna pubblicitaria - Anno 3 |  | 365d? | 2027-01-01 | 2027-12-31 | 124 |  | 2027-01-01 | 2027-12-31 | 365d? | 0d |  | finish no earlier than 2027-12-31 | Reparto Marketing [0.3%]; Campagna marketing III [1 Advertisement anno 3] | 10h |  | 15,000 | 15,000 |  |
| 126 | 1.4 | **Video Training** |  | 1101.5d? | 2024-06-10 | 2027-06-16 | 118 |  | 2024-06-10 | 2027-06-16 | 1101.5d? | 198.5d |  |  |  | 80h |  | 960 | 960 |  |
| 127 | 1.4.1 | Video Training 0 |  | 4d | 2024-06-10 | 2024-06-13 | 118 |  | 2024-06-10 | 2024-06-13 | 4d | 1288.5d | 365d | start no earlier than 2024-06-10 | Reparto Training [62.5%] | 20h |  | 240 | 240 |  |
| 128 | 1.4.2 | Video Training 1 |  | 2.5d | 2025-06-14 | 2025-06-16 | 127 |  | 2025-06-14 | 2025-06-16 | 2.5d | 923.5d | 362.5d | start no earlier than 2025-06-14 | Reparto Training | 20h |  | 240 | 240 |  |
| 129 | 1.4.3 | Video Training 2 |  | 2.5d | 2026-06-14 | 2026-06-16 | 128 |  | 2026-06-14 | 2026-06-16 | 2.5d | 561d | 362.5d | start no earlier than 2026-06-14 | Reparto Training | 20h |  | 240 | 240 |  |
| 130 | 1.4.4 | Video Training 3 |  | 2.5d? | 2027-06-14 | 2027-06-16 | 129 |  | 2027-06-14 | 2027-06-16 | 2.5d? | 198.5d |  | start no earlier than 2027-06-14 | Reparto Training | 20h |  | 240 | 240 |  |

| ID | WBS | Task | Duration | Start | Finish | Predecessors | Baseline start | Baseline finish | Baseline duration | Total slack | Constraint | Resources | Work | Cost | Baseline cost |
| --- | --- | --- | --- | --- | --- | --- | --- | --- | --- | --- | --- | --- | --- | --- | --- |
| 131 | 1.5 | **Hosting** | 1207d | 2024-09-11 | 2027-12-31 | 118 | 2024-06-10 | 2027-12-31 | 1300d |  |  |  |  | 7,510 | 7,510 |
| 132 | 1.5.1 | Hosting 0 | 206d | 2024-06-10 | 2025-01-01 | 118 | 2024-06-10 | 2025-01-01 | 206d | 0d | start no earlier than 2024-06-10 | Hosting - Anno 0 |  | 710 | 710 |
| 133 | 1.5.2 | Hosting 1 | 365d | 2025-01-02 | 2026-01-01 | 132 | 2025-01-02 | 2026-01-01 | 365d | 0d | start no earlier than 2025-01-02 | Hosting - Anno 1 |  | 1,170 | 1,170 |
| 134 | 1.5.3 | Hosting 2 | 365d | 2026-01-02 | 2027-01-01 | 133 | 2026-01-02 | 2027-01-01 | 365d | 0d | start no earlier than 2026-01-02 | Hosting - Anno 2 |  | 2,130 | 2,130 |
| 135 | 1.5.4 | Hosting 3 | 364d | 2027-01-02 | 2027-12-31 | 134 | 2027-01-02 | 2027-12-31 | 364d | 0d | finish no earlier than 2027-12-31 | Hosting - Anno 3 |  | 3,500 | 3,500 |
| 136 | 1.6 | **Customer Service** | 1287d? | 2024-06-23 | 2027-12-31 |  | 2024-06-23 | 2027-12-31 | 1287d? | 0d |  |  | 1872h | 22,464 | 22,464 |
| 137 | 1.6.1 | Customer Service Anno 0 | 192d? | 2024-06-23 | 2024-12-31 | 114 | 2024-06-23 | 2024-12-31 | 192d? | 0d | finish no earlier than 2024-12-31 | Reparto Customer Care [12.5%] | 192h | 2,304 | 2,304 |
| 138 | 1.6.2 | Customer Service Anno 1 | 365d? | 2025-01-01 | 2025-12-31 | 137 | 2025-01-01 | 2025-12-31 | 365d? | 0d | finish no earlier than 2025-12-31 | Reparto Customer Care | 432h | 5,184 | 5,184 |
| 139 | 1.6.3 | Customer Service Anno 2 | 365d? | 2026-01-01 | 2026-12-31 | 138 | 2026-01-01 | 2026-12-31 | 365d? | 0d | finish no earlier than 2026-12-31 | Reparto Customer Care | 576h | 6,912 | 6,912 |
| 140 | 1.6.4 | Customer Service Anno 3 | 365d? | 2027-01-01 | 2027-12-31 | 139 | 2027-01-01 | 2027-12-31 | 365d? | 0d | finish no earlier than 2027-12-31 | Reparto Customer Care | 672h | 8,064 | 8,064 |
| 141 | 1.7 | **Maintenance** | 1272d | 2024-07-08 | 2027-12-31 | 114 | 2024-07-08 | 2027-12-31 | 1272d | 0d |  |  | 1666h | 28,599.67 | 28,599.67 |
| 142 | 1.7.1 | Maintenance Anno 0 | 178d | 2024-07-08 | 2025-01-01 | 114 | 2024-07-08 | 2025-01-01 | 178d | 0d | finish no earlier than 2025-01-01 | Backend Dev 1; Backend Dev 2; Data Scientist; Frontend Dev 1; Frontend Dev 2; Quality Assurance Analyst | 238h | 4,085.67 | 4,085.67 |
| 143 | 1.7.2 | Maintenance Anno 1 | 366d | 2025-01-02 | 2026-01-02 | 142 | 2025-01-02 | 2026-01-02 | 366d | 0d | finish no earlier than 2026-01-02 | Backend Dev 1; Backend Dev 2; Data Scientist; Frontend Dev 1; Frontend Dev 2; Quality Assurance Analyst | 476h | 8,171.33 | 8,171.33 |
| 144 | 1.7.3 | Maintenance Anno 2 | 366d | 2026-01-03 | 2027-01-03 | 143 | 2026-01-03 | 2027-01-03 | 366d | 0d | start no earlier than 2026-01-03 | Backend Dev 1; Backend Dev 2; Data Scientist; Frontend Dev 1; Frontend Dev 2; Quality Assurance Analyst | 476h | 8,171.33 | 8,171.33 |
| 145 | 1.7.4 | Maintenance Anno 3 | 362d | 2027-01-04 | 2027-12-31 | 144 | 2027-01-04 | 2027-12-31 | 362d | 0d | finish no earlier than 2027-12-31 | Backend Dev 1; Backend Dev 2; Data Scientist; Frontend Dev 1; Frontend Dev 2; Quality Assurance Analyst | 476h | 8,171.33 | 8,171.33 |
